# Warehouse Renovation Project

Schedule from MS Project, 2020-03-02 to 2020-08-21, costs in $.
Syracuse University

## Calendars

- Standard: Mon-Fri 08:00-12:00, 13:00-17:00; Sat-Sun off.
- Second Shift: Mon-Fri 17:00-19:00, 19:15-23:45; Sat-Sun off.

## Resources

| Resource | Rate |
| --- | --- |
| Madhavi Kadam | 60 |
| Isabella Cantina | 48 |
| Tom Johansen | 44 |
| Arjun Aditya | 45 |
| Samantha Peters | 48 |
| PC with Monitor & Software | 1850 |
| VoIP Handset | 525 |
| Cubicle Furniture | 2225 |
| Copier/Printer | 3950 |
| Aironet Access Point | 340 |
| Aggregation Switch | 2365 |
| Network Cable | 450 |

## Schedule

| ID | WBS | Task | Type | Duration | Start | Finish | Predecessors | Total slack | Constraint | Resources | Work | Cost |
| --- | --- | --- | --- | --- | --- | --- | --- | --- | --- | --- | --- | --- |
| 1 | 1 | **Initiate Project** |  | 8d | 2020-03-02 | 2020-03-11 |  | 0d |  |  | 22.5h | 1,183.01 |
| 2 | 1.1 | Identifying stakeholders | manual | 16h | 2020-03-02 | 2020-03-03 |  |  |  | Madhavi Kadam [75%]; Arjun Aditya | 6h | 308.57 |
| 3 | 1.2 | Meeting with Stakeholders | manual | 8h | 2020-03-04 | 2020-03-04 |  |  |  | Arjun Aditya; Isabella Cantina; Madhavi Kadam [75%]; Samantha Peters; Tom Johansen | 7h | 338.95 |
| 4 | 1.3 | Document Production | manual | 8h | 2020-03-05 | 2020-03-05 |  |  |  | Madhavi Kadam [75%] | 4h | 240 |
| 5 | 1.4 | **Develop Project Charter** |  | 2d | 2020-03-06 | 2020-03-09 |  | 0d |  |  | 2h | 120 |
| 6 | 1.4.1 | Define Business Case | manual | 8h | 2020-03-06 | 2020-03-06 |  |  |  | Madhavi Kadam [75%] | 1h | 60 |
| 7 | 1.4.2 | Define Project Scope | manual | 8h | 2020-03-09 | 2020-03-09 |  |  |  | Madhavi Kadam [75%] | 1h | 60 |
| 8 | 1.5 | **Project Kickoff Meeting** |  | 2d | 2020-03-10 | 2020-03-11 |  | 0d |  |  | 3.5h | 175.49 |
| 9 | 1.5.1 | Meet in Conference Room | manual | 8h | 2020-03-10 | 2020-03-10 |  |  |  | Arjun Aditya; Isabella Cantina; Madhavi Kadam [75%]; Samantha Peters; Tom Johansen | 1.5h | 72.63 |
| 10 | 1.5.2 | Conduct Site Survey | manual | 8h | 2020-03-11 | 2020-03-11 |  |  |  | Arjun Aditya; Madhavi Kadam [75%] | 2h | 102.86 |
| 11 | 2 | **Plan Project** |  | 69d | 2020-03-12 | 2020-06-16 |  | 0d |  |  | 140.5h | 84,383.73 |
| 12 | 2.1 | **Design & Specify** |  | 10d | 2020-03-12 | 2020-03-25 |  | 0d |  |  | 34.5h | 1,709.73 |
| 13 | 2.1.1 | Design the Cubicle Furnitures to be installed | manual | 16h | 2020-03-12 | 2020-03-13 |  |  |  | Madhavi Kadam [75%] | 8h | 480 |
| 14 | 2.1.2 | Design the Installation of VoIP handsets | manual | 16h | 2020-03-16 | 2020-03-17 |  |  |  | Arjun Aditya; Isabella Cantina | 7h | 325.5 |
| 15 | 2.1.3 | Specify new Laptop Requirements | manual | 16h | 2020-03-16 | 2020-03-17 |  |  | start no earlier than 2020-03-16 | Samantha Peters; Tom Johansen | 7h | 322 |
| 16 | 2.1.4 | Specify Multifunctional printer-copier | manual | 16h | 2020-03-20 | 2020-03-23 |  |  |  | Arjun Aditya; Samantha Peters | 7h | 332.23 |
| 17 | 2.1.5 | Specify Ciena 7609 aggregation switch | manual | 16h | 2020-03-20 | 2020-03-23 |  |  |  | Arjun Aditya [25%]; Samantha Peters [25%] | 2h | 93 |
| 18 | 2.1.6 | Specify Cisco Aironet Wireless Access Points | manual | 16h | 2020-03-20 | 2020-03-23 |  |  |  | Samantha Peters; Tom Johansen | 1.5h | 69 |
| 19 | 2.1.7 | Specify Cat 6e Cable | manual | 16h | 2020-03-24 | 2020-03-25 |  |  |  | Tom Johansen | 2h | 88 |
| 20 | 2.2 | **Procurement** |  | 6d | 2020-03-26 | 2020-04-02 |  | 0d |  |  | 43h | 1,966 |
| 21 | 2.2.1 | Procure the Cubicle Furnitures to be installed | manual | 16h | 2020-03-26 | 2020-03-27 | 13 |  |  | Samantha Peters | 7h | 336 |
| 22 | 2.2.2 | Procure the Installation of VoIP Handsets | manual | 16h | 2020-03-26 | 2020-03-27 | 14 |  | start no earlier than 2020-03-26 | Arjun Aditya | 7h | 315 |
| 23 | 2.2.3 | Procure New Laptops | manual | 16h | 2020-03-26 | 2020-03-27 | 15 |  | start no earlier than 2020-03-26 | Tom Johansen | 7h | 308 |
| 24 | 2.2.4 | Procure Multifunctional printer-copier | manual | 16h | 2020-03-30 | 2020-03-31 | 16 |  |  | Arjun Aditya | 7h | 315 |
| 25 | 2.2.5 | Procure Ciena 7609 aggregation switch | manual | 16h | 2020-03-30 | 2020-03-31 | 17 |  |  | Isabella Cantina | 4h | 192 |
| 26 | 2.2.6 | Procure Cisco Aironet Wireless Access Points | manual | 16h | 2020-03-30 | 2020-03-31 | 18 |  | finish no earlier than 2020-03-31 | Isabella Cantina | 4h | 192 |
| 27 | 2.2.7 | Procure Cat 6e Cable | manual | 16h | 2020-04-01 | 2020-04-02 | 19 |  |  | Tom Johansen | 7h | 308 |

| ID | WBS | Task | Type | Duration | Start | Finish | Predecessors | Total slack | Constraint | Calendar | Resources | Work | Cost |
| --- | --- | --- | --- | --- | --- | --- | --- | --- | --- | --- | --- | --- | --- |
| 28 | 2.3 | **Receive Material** |  | 27d | 2020-05-08 | 2020-06-16 |  | 0d |  |  |  | 63h | 80,708 |
| 29 | 2.3.1 | Receive & Inspect Cubicle Furnitures | manual | 16h | 2020-06-12 | 2020-06-16 | 21FS+9w |  | start no earlier than 2020-06-09 | Second Shift | Arjun Aditya; Cubicle Furniture [1500%] | 5h | 33,600 |
| 30 | 2.3.2 | Receive & Inspect VoIP Handset | manual | 32h | 2020-05-08 | 2020-05-15 | 22FS+5w |  |  | Second Shift | Isabella Cantina; VoIP Handset [1500%] | 10h | 8,355 |
| 31 | 2.3.3 | Receive & Inspect new Laptops | manual | 28.5h | 2020-05-29 | 2020-06-03 | 23FS+5w |  | finish no earlier than 2020-06-03 | Second Shift | Tom Johansen; PC with Monitor & Software [1500%] | 10h | 28,190 |
| 32 | 2.3.4 | Receive & Inspect Multifunctional printer-copier | manual | 40h | 2020-05-26 | 2020-06-01 | 24FS+5w |  | start no earlier than 2020-05-26 | Second Shift | Arjun Aditya; Copier/Printer | 10h | 4,400 |
| 33 | 2.3.5 | Receive & Inspect Ciena 7609 aggregation switch | manual | 32h | 2020-05-29 | 2020-06-03 | 25FS+5w |  | start no earlier than 2020-05-29 | Second Shift | Samantha Peters; Aggregation Switch | 8h | 2,749 |
| 34 | 2.3.6 | Receive & Inspect Cisco Aironet Wireless Access Points | manual | 32h | 2020-05-29 | 2020-06-03 | 26FS+5w |  |  | Second Shift | Samantha Peters; Aironet Access Point [600%] | 8h | 2,424 |
| 35 | 2.3.7 | Receive and Inspect Cat 6e Cable | manual | 32h | 2020-05-14 | 2020-05-21 | 27FS+5w |  | finish no earlier than 2020-05-11 | Second Shift | Arjun Aditya; Network Cable | 12h | 990 |
| 36 | 3 | **Executing** |  | 54d | 2020-05-14 | 2020-07-28 |  | 0d |  |  |  | 242h | 11,282 |
| 37 | 3.1 | **Install Materials** |  | 34d | 2020-05-14 | 2020-06-30 |  | 0d |  |  |  | 96h | 4,398 |
| 38 | 3.1.1 | Install Cubicle Furniture | manual | 28.5h | 2020-06-16 | 2020-06-23 | 29 |  | finish no earlier than 2020-06-16 | Second Shift | Samantha Peters; Isabella Cantina | 16h | 768 |
| 39 | 3.1.2 | Install VoIP Handsets | manual | 32h | 2020-06-23 | 2020-06-30 | 30, 38 |  |  | Second Shift | Arjun Aditya; Tom Johansen | 16h | 712 |
| 40 | 3.1.3 | Install New Laptops | manual | 41.5h | 2020-06-16 | 2020-06-24 | 31, 38 |  |  | Second Shift | Arjun Aditya [62.5%]; Tom Johansen [62.5%] | 16h | 712 |
| 41 | 3.1.4 | Install Multifunctional Printer-Copier | manual | 35h | 2020-06-10 | 2020-06-16 | 32 |  | start no earlier than 2020-06-10 | Second Shift | Arjun Aditya; Samantha Peters | 20h | 930 |
| 42 | 3.1.5 | Install Ciena 7609 aggregation switch | manual | 28.5h | 2020-06-10 | 2020-06-12 | 33 |  |  | Second Shift | Tom Johansen; Isabella Cantina | 8h | 368 |
| 43 | 3.1.6 | Install Cisco Aironet Wireless Access Points | manual | 32h | 2020-06-24 | 2020-06-29 | 34 |  |  | Second Shift | Isabella Cantina; Tom Johansen | 8h | 368 |
| 44 | 3.1.7 | Install Cat 6e Cable | manual | 48h | 2020-05-14 | 2020-05-21 | 35 |  |  | Second Shift | Arjun Aditya | 12h | 540 |
| 45 | 3.2 | **Testing Materials** |  | 24d | 2020-06-25 | 2020-07-28 |  | 0d |  |  |  | 146h | 6,884 |
| 46 | 3.2.1 | Test that the furniture is assembled | manual | 40h | 2020-07-14 | 2020-07-20 | 38 |  |  |  | Arjun Aditya | 20h | 900 |
| 47 | 3.2.2 | Test VoIP handset | manual | 40h | 2020-07-14 | 2020-07-20 | 39 |  |  |  | Isabella Cantina | 20h | 960 |
| 48 | 3.2.3 | Test New Laptops for Hardware | manual | 40h | 2020-06-25 | 2020-07-01 | 40 |  |  |  | Samantha Peters | 15h | 720 |
| 49 | 3.2.4 | Test New Laptops for Software | manual | 24h | 2020-07-02 | 2020-07-06 | 40, 48 |  |  |  | Samantha Peters | 15h | 720 |
| 50 | 3.2.5 | Test printer-copier | manual | 32h | 2020-07-21 | 2020-07-24 | 41 |  |  |  | Isabella Cantina | 16h | 768 |
| 51 | 3.2.6 | Test Ciena 7609 Switch | manual | 48h | 2020-07-21 | 2020-07-28 | 42 |  |  |  | Samantha Peters | 24h | 1,152 |
| 52 | 3.2.7 | Test Cisco Aironet Wireless Access Points | manual | 48h | 2020-07-21 | 2020-07-28 | 43 |  |  |  | Samantha Peters | 20h | 960 |
| 53 | 3.2.8 | Test Cat 6e Cable Connection | manual | 32h | 2020-07-21 | 2020-07-24 | 44 |  |  |  | Tom Johansen | 16h | 704 |

| ID | WBS | Task | Type | Duration | Start | Finish | Total slack | Constraint | Resources | Work | Cost |
| --- | --- | --- | --- | --- | --- | --- | --- | --- | --- | --- | --- |
| 54 | 4 | **Close Project** |  | 20d | 2020-07-27 | 2020-08-21 | 0d |  |  | 63h | 3,282.22 |
| 55 | 4.1 | **Seak Sponsor Approval** |  | 20d | 2020-07-27 | 2020-08-21 | 0d |  |  | 63h | 3,282.22 |
| 56 | 4.1.1 | Seak final approval from sponsors | manual | 48h | 2020-07-27 | 2020-08-03 |  |  | Madhavi Kadam [75%] | 8h | 480 |
| 57 | 4.1.2 | Fix open items | manual | 24h | 2020-08-04 | 2020-08-06 |  |  | Isabella Cantina; Samantha Peters | 12h | 576 |
| 58 | 4.1.3 | Conduct survey with sponsors | manual | 16h | 2020-08-07 | 2020-08-10 |  | start no earlier than 2020-08-07 | Madhavi Kadam [75%] | 8h | 480 |
| 59 | 4.1.4 | Signing Off - Meeting | manual | 16h | 2020-08-11 | 2020-08-12 |  |  | Madhavi Kadam [75%]; Arjun Aditya; Isabella Cantina; Samantha Peters; Tom Johansen | 8h | 382.22 |
| 60 | 4.1.5 | Create and Achieve Final Documentation | manual | 16h | 2020-08-13 | 2020-08-14 |  |  | Arjun Aditya; Tom Johansen | 8h | 356 |
| 61 | 4.1.6 | Ensure all vendor contracts are closed | manual | 8h | 2020-08-13 | 2020-08-13 |  |  | Madhavi Kadam [75%] | 4h | 240 |
| 62 | 4.1.7 | Conduct training | manual | 16h | 2020-08-17 | 2020-08-18 |  |  | Isabella Cantina; Samantha Peters | 3h | 144 |
| 63 | 4.1.8 | Create User Manual | manual | 16h | 2020-08-19 | 2020-08-20 |  |  | Isabella Cantina; Samantha Peters | 8h | 384 |
| 64 | 4.1.9 | Reassigning resources | manual | 8h | 2020-08-21 | 2020-08-21 |  |  | Madhavi Kadam [75%] | 4h | 240 |
